# Anti Circumvention - 996

Schedule from MS Project, 2025-01-01 to 2025-09-01.

## Calendars

- Standard: Mon-Fri 08:00-12:00, 13:00-17:00; Sat-Sun off.

## Schedule

| ID | WBS | Task | Type | Duration | Start | Finish | Predecessors | Total slack | Free slack | Constraint |
| --- | --- | --- | --- | --- | --- | --- | --- | --- | --- | --- |
| 1 | 1 | **Consideration & Initiation** |  | 13d | 2025-01-01 | 2025-01-17 |  | 0d |  |  |
| 2 | 1.1 | Application lodged | milestone | 0d | 2025-01-01 | 2025-01-01 |  | 0d |  | start no earlier than 2025-01-01 |
| 3 | 1.2 | Review the application |  | 5d | 2025-01-01 | 2025-01-07 | 2 | 0d |  |  |
| 4 | 1.3 | Prepare initiation documents |  | 4d | 2025-01-08 | 2025-01-13 | 3 | 0d |  |  |
| 5 | 1.4 | Review & revision of initiation documents |  | 3d | 2025-01-14 | 2025-01-16 | 4 | 0d |  |  |
| 6 | 1.5 | Approve Application and Initiation Decision in CMS |  | 1d | 2025-01-17 | 2025-01-17 | 5 | 0d |  |  |
| 7 | 1.6 | Initiation | milestone | 0d | 2025-01-17 | 2025-01-17 | 6 | 0d |  |  |
| 8 | 2 | **Verifications** |  | 77d | 2025-01-20 | 2025-05-06 |  | 0d |  |  |
| 9 | 2.1 | Receive Importer questionnaires | milestone | 0d | 2025-02-07 | 2025-02-07 | 7FF+21ed | 57d | 0d |  |
| 10 | 2.2 | RIQ deficiency check |  | 5d | 2025-02-10 | 2025-02-14 | 9 | 57d |  |  |
| 11 | 2.3 | Receive Exporter questionnaires | milestone | 0d | 2025-02-23 | 2025-02-23 | 7FF+37ed | 0d |  |  |
| 12 | 2.4 | Exporter questionnaire extensions of time | milestone, inactive | 0d | 2025-02-23 | 2025-02-23 | 11 | 0d |  |  |
| 13 | 2.5 | REQ deficiency check |  | 1d | 2025-02-24 | 2025-02-24 | 12 | 0d |  |  |
| 14 | 2.6 | Verification planning |  | 7d | 2025-02-25 | 2025-03-05 | 13 | 0d |  |  |
| 15 | 2.7 | **Australian Industry Verification** |  | 27d | 2025-01-20 | 2025-02-25 |  | 50d |  |  |
| 16 | 2.7.1 | Confirm Australian Industry members to visit |  | 2d | 2025-01-20 | 2025-01-21 | 7 | 50d | 0d |  |
| 17 | 2.7.2 | Schedule delay - Australian Industry verification | milestone, inactive | 0d | 2025-01-21 | 2025-01-21 | 16 | 50d | 0d |  |
| 18 | 2.7.3 | Complete pre-work |  | 5d | 2025-01-22 | 2025-01-28 | 17 | 50d | 0d |  |
| 19 | 2.7.4 | Undertake Australian Industry Verification |  | 5d | 2025-01-29 | 2025-02-04 | 18 | 50d | 0d |  |
| 20 | 2.7.5 | Prepare the Australian Industry Verification Report and Work Program |  | 3w | 2025-02-05 | 2025-02-25 | 19 | 50d | 0d |  |
| 21 | 2.7.6 | Publish the Verification Report | milestone | 0d | 2025-02-25 | 2025-02-25 | 20 | 50d |  |  |
| 22 | 2.8 | **Importer Verification** |  | 24d | 2025-03-05 | 2025-04-08 |  | 20d |  |  |
| 23 | 2.8.1 | Schedule delay - Importer verification | milestone | 0d | 2025-03-05 | 2025-03-05 | 14 | 20d | 0d |  |
| 24 | 2.8.2 | Complete pre-work |  | 4d | 2025-03-06 | 2025-03-11 | 23 | 20d | 0d |  |
| 25 | 2.8.3 | Undertake Importer Verification |  | 5d | 2025-03-12 | 2025-03-18 | 24 | 20d | 0d |  |
| 26 | 2.8.4 | Prepare the Importer Verification Report |  | 5d | 2025-03-19 | 2025-03-25 | 25 | 20d | 0d |  |
| 27 | 2.8.5 | VADA review |  | 5d | 2025-03-26 | 2025-04-01 | 26 | 20d | 0d |  |
| 28 | 2.8.6 | Importer Review |  | 5d | 2025-04-02 | 2025-04-08 | 27 | 20d | 0d |  |
| 29 | 2.8.7 | Publish the Verification Report | milestone | 0d | 2025-04-08 | 2025-04-08 | 28 | 20d |  |  |

Notes:
- 3: Case Manager reviews the lodgement for completeness and eligibility. / Case manager prepares a Deficiency Advice if applicable. / Case manager review the CRE data and advice from the ABF.
- 4: Initiation documents including: / Consideration report / Initiation ADN / Questionnaires / Prepare Strategic Case Plan & Determine date of Initiation / Case Manager notifies DFAT & relevant government / Case Manager contacts other industry members / Case Manager updates CMS with Stakeholder detail / Comments: Case Manager prepares the draft Consideration Report
- 5: Comments: Case Director reviews the Consideration Report
- 7: If Initiation is after Consideration Decision Date, please change the start date of this task. / Initaiton include requesting DSA to publish the documents and all corespondings to stsakeholders (emails, quetsionnaires, etc).
- 9: Comments: Due in 21 days after initiation
- 11: Comments: Due in 37 days after initaition
- 14: Comments: Case Manager determines whether to verify any stakeholder
- 16: Comments: Case Director and Case Manager confirm Australian Industry members to visit
- 18: Verification Team commence Verification Work Programs and prepare agendas / Verification Team complete pre-work / Relevant Verification Team makes travel arrangements / Comments: Verification Team complete pre-work
- 19: Comments: Verification Team undertake Australian Industry Verification
- 20: Comments: Verification Team prepare the Australian Industry Verification Report and Work Program
- 21: Comments: DSA Business Services publish the Verification Report
- 24: Including: / Officer undertaking the travel makes the travel arrangements / Verification Team commences Verification Work Programs and prepares agendas / completing and reviewing of VRAM / Comments: Verification Team complete pre-work
- 25: Comments: Verification Team undertakes Importer/Exporter Verification
- 26: Comments: Verification Team prepares the Importer/Exporter Verification Report
- 27: Comments: VADA (QAV) reviews Work Programs, Verification Reports, Dumping Margin Calculations and appendices
- 29: Comments: DSA Business Services publish the Verification Report

| ID | WBS | Task | Type | Duration | Start | Finish | Predecessors | Total slack | Free slack |
| --- | --- | --- | --- | --- | --- | --- | --- | --- | --- |
| 30 | 2.9 | **Exporter Verification** |  | 44d | 2025-03-05 | 2025-05-06 |  | 0d |  |
| 31 | 2.9.1 | Schedule delay - exporter verification | milestone | 0d | 2025-03-05 | 2025-03-05 | 14 | 0d |  |
| 32 | 2.9.2 | Complete pre-work |  | 8d | 2025-03-06 | 2025-03-17 | 31 | 0d |  |
| 33 | 2.9.3 | Undertake Exporter Verification |  | 5d | 2025-03-18 | 2025-03-24 | 32 | 0d |  |
| 34 | 2.9.4 | Prepare the Importer/Exporter Verification Report |  | 8d | 2025-03-25 | 2025-04-03 | 33 | 0d |  |
| 35 | 2.9.5 | Finalise the verification |  | 18d | 2025-04-04 | 2025-04-29 | 34 | 0d |  |
| 36 | 2.9.6 | VADA review |  | 5d | 2025-04-30 | 2025-05-06 | 35 | 0d |  |
| 37 | 2.9.7 | Publish the Verification Report | milestone | 0d | 2025-05-06 | 2025-05-06 | 36 | 0d |  |
| 38 | 2.10 | **End user Verification** | inactive | 0d | 2025-02-23 | 2025-02-23 |  | 52d |  |
| 39 | 2.10.1 | Schedule delay - end user verification | milestone, inactive | 0d | 2025-02-23 | 2025-02-23 | 7SS+37ed | 52d | 0d |
| 40 | 2.10.2 | Complete pre-work | milestone, inactive | 0d | 2025-02-23 | 2025-02-23 | 39 | 52d | 0d |
| 41 | 2.10.3 | Undertake End User Verification | milestone, inactive | 0d | 2025-02-23 | 2025-02-23 | 40 | 52d | 0d |
| 42 | 2.10.4 | Prepare the Verification Report | milestone, inactive | 0d | 2025-02-23 | 2025-02-23 | 41 | 52d | 0d |
| 43 | 2.10.5 | Finalise the verification | milestone, inactive | 0d | 2025-02-23 | 2025-02-23 | 42 | 52d | 0d |
| 44 | 2.10.6 | Publish the Verification Report | milestone, inactive | 0d | 2025-02-23 | 2025-02-23 | 43 | 52d |  |
| 45 | 3 | **SEF** |  | 33d | 2025-05-07 | 2025-06-20 | 8 | 0d |  |
| 46 | 3.1 | Prepare SEF |  | 15d | 2025-05-07 | 2025-05-27 |  | 0d |  |
| 47 | 3.2 | Legal review of SEF |  | 5d | 2025-05-28 | 2025-06-03 | 46 | 0d |  |
| 48 | 3.3 | Pre CP review and refine |  | 5d | 2025-06-04 | 2025-06-10 | 47 | 0d |  |
| 49 | 3.4 | Present SEF at the CP (Thursday) |  | 4d | 2025-06-11 | 2025-06-16 | 48 | 0d |  |
| 50 | 3.5 | Review and Refine Post CP |  | 3d | 2025-06-17 | 2025-06-19 | 49 | 0d |  |
| 51 | 3.6 | Commissioner reviews SEF and approve on CMS |  | 1d | 2025-06-20 | 2025-06-20 | 50 | 0d |  |
| 52 | 3.7 | Publishes SEF | milestone | 0d | 2025-06-20 | 2025-06-20 | 51 | 0d |  |
| 53 | 4 | **Final Report** |  | 51d | 2025-06-23 | 2025-09-01 | 45 | 0d |  |
| 54 | 4.1 | Receive submissions |  | 20d | 2025-06-23 | 2025-07-18 |  | 0d |  |
| 55 | 4.2 | Consider the submissions |  | 5d | 2025-07-21 | 2025-07-25 | 54 | 0d |  |
| 56 | 4.3 | Prepare Final Report |  | 10d | 2025-07-28 | 2025-08-08 | 55 | 0d |  |
| 57 | 4.4 | Legal and Deputy Commissioner review Final Report |  | 5d | 2025-08-11 | 2025-08-15 | 56 | 0d |  |
| 58 | 4.5 | Present Final Report at the CP (Thursday) |  | 5d | 2025-08-18 | 2025-08-22 | 57 | 0d |  |
| 59 | 4.6 | Review and Refine Post CP |  | 5d | 2025-08-25 | 2025-08-29 | 58 | 0d |  |
| 60 | 4.7 | Commissioner reviews the Final Report and approve on CMS |  | 1d | 2025-09-01 | 2025-09-01 | 59 | 0d |  |
| 61 | 4.8 | Send the Final Report to Minister | milestone | 0d | 2025-09-01 | 2025-09-01 | 60 | 0d |  |

Notes:
- 32: Including / Travel is organised by QAV / Verification Team commences Verification Work Programs and prepares agendas / preparing and reviewing VRAM / Comments: Verification Team complete pre-work
- 33: Comments: Verification Team undertakes Importer/Exporter Verification
- 34: Comments: Verification Team prepares the Importer/Exporter Verification Report
- 35: Comments: Verification Team finalises the verification
- 36: Comments: VADA (QAV) reviews Work Programs, Verification Reports, Dumping Margin Calculations and appendices
- 37: Comments: DSA Business Services publish the Verification Report
- 40: Including / Officer undertaking the travel makes the travel arrangements / Verification Team commences Verification Work Programs and prepares agendas / Comments: Verification Team complete pre-work
- 41: Comments: Verification Team undertakes Importer/Exporter Verification
- 42: Comments: Verification Team prepares the Importer/Exporter Verification Report
- 43: Comments: Verification Team finalises the verification
- 44: Comments: DSA Business Services publish the Verification Report
- 46: Comments: Case Manager prepares SEF
- 47: Comments: Legal reviews SEF
- 49: Comments: Case Manager presents SEF at the CP
- 50: Comments: Case Manager amends the SEF
- 51: Case Manager populates CMS with variable factors used to implement PAD / Comments: Commissioner reviews SEF
- 52: Request DSA Business Services to publish SEF / Comments: DSA Business Services publishes SEF
- 54: Receive and publish non-confidential version / Comments: Case Manager receives submissions
- 55: Including all previous submissions and if any changes are to happen on the calculations, VADA needs to review the changes. / Comments: Case Manager considers the submissions
- 56: Case Manager prepares Final Report / Case Director reviews Final Report
- 57: Comments: Legal and Deputy Commissioner review Final Report
- 58: Comments: Case Manager presents Final Report
- 59: Comments: Case Manager amends Final Report
- 60: Comments: Commissioner reviews the Final Report
- 61: Request DSA Business Services to send the Final Repor to Minister / Comments: DSA Business Services sends the Final Report and accompanying documentation to the Minister
