# Investigations 999

Schedule from MS Project, 2025-01-01 to 2025-11-21.

## Calendars

- Standard: Mon-Fri 08:00-12:00, 13:00-17:00; Sat-Sun off.

## Resources

| Resource |
| --- |
| Justin Wickes |
| Jayke Armstrong |
| Daniel Vong |
| Hugo Rogers |
| Allison Quek |
| Matthew Williams |
| Tim King |
| Tezcan Gummus |

## Schedule

| ID | WBS | Task | Type | Duration | Start | Finish | Predecessors | Total slack | Free slack | Constraint | Resources | Work | Day Count | Comments |
| --- | --- | --- | --- | --- | --- | --- | --- | --- | --- | --- | --- | --- | --- | --- |
| 1 | 1 | **Resource Allocation** |  | 233d | 2025-01-01 | 2025-11-21 |  | 0d |  |  |  | 7456h |  |  |
| 2 | 1.1 | Case manager 1 |  | 59d | 2025-01-01 | 2025-03-24 | 32FF | 0d |  | finish no earlier than 2025-03-22 | Jayke Armstrong | 472h | 62 |  |
| 3 | 1.2 | Case director 1 |  | 59d | 2025-01-01 | 2025-03-24 | 32FF | 0d |  | finish no earlier than 2025-03-22 | Justin Wickes | 472h | 62 |  |
| 4 | 1.3 | Case investigator 1 |  | 59d | 2025-01-01 | 2025-03-24 | 32FF | 0d |  | finish no earlier than 2025-03-22 | Daniel Vong | 472h | 62 |  |
| 5 | 1.4 | Legal 1 |  | 59d | 2025-01-01 | 2025-03-24 | 32FF | 0d |  | finish no earlier than 2025-03-22 | Allison Quek | 472h | 62 |  |
| 6 | 1.5 | Case manager 2 |  | 174d | 2025-03-25 | 2025-11-21 | 2, 139FF | 0d |  | finish no earlier than 2025-09-13 | Tim King | 1392h | 304 |  |
| 7 | 1.6 | Case director 2 |  | 174d | 2025-03-25 | 2025-11-21 | 3, 139FF | 0d |  | finish no earlier than 2025-09-13 | Matthew Williams | 1392h | 304 |  |
| 8 | 1.7 | Case investigator 2 |  | 174d | 2025-03-25 | 2025-11-21 | 4, 139FF | 0d |  | finish no earlier than 2025-09-13 | Tezcan Gummus | 1392h | 304 |  |
| 9 | 1.8 | Legal 2 |  | 174d | 2025-03-25 | 2025-11-21 | 5, 139FF | 0d |  | finish no earlier than 2025-09-13 | Hugo Rogers | 1392h | 304 |  |
| 10 | 2 | **Consideration & Initiation** |  | 15d | 2025-01-01 | 2025-01-21 |  | 0d |  |  |  |  |  | This is 20 edays |
| 11 | 2.1 | Original lodgement date | milestone | 0d | 2025-01-01 | 2025-01-01 |  | 0d |  | start no earlier than 2025-01-01 |  |  | -20 |  |
| 12 | 2.2 | Last lodgement date | milestone | 0d | 2025-01-01 | 2025-01-01 | 11 | 0d |  |  |  |  | -20 |  |
| 13 | 2.3 | Review the application |  | 5d | 2025-01-01 | 2025-01-07 | 12 | 219d | 0d |  |  |  | -14 |  |
| 14 | 2.4 | Meeting - QCP 1 |  | 1h | 2025-01-01 | 2025-01-01 | 11FF+1d | 232d |  |  |  |  | -20 |  |
| 15 | 2.5 | Examine Australian economic conditions |  | 2d | 2025-01-08 | 2025-01-09 | 13 | 219d | 0d |  |  |  | -12 | Case manager examines Australian economic conditions |
| 16 | 2.6 | Prepare initiation documents |  | 4d | 2025-01-10 | 2025-01-15 | 15 | 219d | 0d |  |  |  | -6 | Case Manager prepares the draft Consideration Report |
| 17 | 2.7 | Meeting - QCP 2 |  | 1h | 2025-01-16 | 2025-01-16 | 11FF+12d | 221d |  |  |  |  | -5 |  |
| 18 | 2.8 | Review & revision of initiation documents |  | 3d | 2025-01-16 | 2025-01-20 | 16 | 219d |  |  |  |  | -1 | Case Director reviews the Consideration Report |
| 19 | 2.9 | Meeting - CP 1 - Initiation decision |  | 1h | 2025-01-17 | 2025-01-17 | 12FS+12d | 219.88d | 0d |  |  |  | -4 | Must be a Thursday |
| 20 | 2.10 | Approve Application and Initiation Decision in CMS |  | 1d | 2025-01-17 | 2025-01-20 | 19 | 219.88d |  |  |  |  | -1 |  |
| 21 | 2.11 | Initiation | milestone | 0d | 2025-01-21 | 2025-01-21 | 11FS+15d, 12FS+15d | 0d |  |  |  |  |  |  |
| 22 | 3 | **PAD/Day 60 Status Report** |  | 35d | 2025-02-05 | 2025-03-25 |  | 34d |  |  |  |  |  | This is 60 edays |
| 23 | 3.1 | Meeting - QCP 3 |  | 1h | 2025-02-05 | 2025-02-05 | 21FS+10d | 207.88d |  |  |  |  | 15 | Discuss project plan timing and key risks/issues for SCP |
| 24 | 3.2 | Meeting - CP 2 - Strategic Case Plan |  | 1h | 2025-02-20 | 2025-02-20 | 21FS+21d | 196.88d |  |  |  |  | 30 | Must be a Thursday |
| 25 | 3.3 | Receive submissions | milestone | 0d | 2025-02-27 | 2025-02-27 | 21FF+27d | 174.88d | 0d |  |  |  | 37 | Case Team receives General Submissions |
| 26 | 3.4 | Consider general submissions |  | 7d | 2025-02-28 | 2025-03-10 | 25 | 174.88d | 0d |  |  |  | 48 | Case Manager considers General Submissions |
| 27 | 3.5 | Meeting - QCP 4 |  | 1h | 2025-03-06 | 2025-03-06 | 25FF+5d | 186d |  |  |  |  | 44 |  |
| 28 | 3.6 | Prepare Day-60 Status Report/PAD |  | 5d | 2025-03-11 | 2025-03-17 | 26 | 174.88d | 0d |  |  |  | 55 | Case Manager prepares a Day-60 Status Report/PAD |
| 29 | 3.7 | Legal review |  | 3d | 2025-03-18 | 2025-03-20 | 28 | 174.88d | 0d |  |  |  | 58 | Legal reviews the Day-60 Status Report/PAD |
| 30 | 3.8 | Meeting - CP 3 - Day 60 report |  | 1h | 2025-03-21 | 2025-03-21 | 29 | 174.88d | 0d |  |  |  | 59 |  |
| 31 | 3.9 | Commissioner review and approve on CMS |  | 1d | 2025-03-21 | 2025-03-24 | 30 | 174.88d |  |  |  |  | 62 | Commissioner review |
| 32 | 3.10 | Publish Day 60 status report/PAD | milestone | 0d | 2025-03-24 | 2025-03-24 | 21FF+44d | 0d |  |  |  |  | 62 | DSA Business Services publish Day-60 Status Report/PAD |

Notes:
- 13: Case Manager reviews the lodgement for completeness and eligibility. / Case manager prepares a Deficiency Advice if applicable. / Case manager review the CRE data and advice from the ABF.
- 16: Initiation documents including: / Consideration report / Initiation ADN / Questionnaires as needed: PIR (exporter), exporter, importer, Australian industry, end user, foreign government, Australian market. / Prepare Strategic Case Plan & Determine date of Initiation / Case Manager notifies DFAT & relevant government / Case Manager contacts other industry members / Case Manager updates CMS with Stakeholder detail
- 21: If Initiation is after Consideration Decision Date, please change the start date of this task. / Initaiton include requesting DSA to publish the documents and all corespondings to stsakeholders (emails, quetsionnaires, etc).
- 25: Receive and Request DSA to publish the non-confidential version of the submissions
- 26: Including whether to have regard to late submissions
- 27: Discuss degree of cooperation, outcomes for Australian Industry verification, outcomes of comparative analysis, importer and exporter verification needs, and likelihood of PAD at Day 60. Assess whether the day 21 project plan remains valid or requires escalation to SCM.
- 32: Request DSA Business Services to publish Day-60 Status Report/PAD

| ID | WBS | Task | Type | Duration | Start | Finish | Predecessors | Total slack | Free slack | Day Count | Delay Category | Delay Detail |
| --- | --- | --- | --- | --- | --- | --- | --- | --- | --- | --- | --- | --- |
| 33 | 3.11 | **PAD after day 60** |  | 0d | 2025-03-24 | 2025-03-24 |  | 173d |  |  |  |  |
| 34 | 3.11.1 | Schedule deferral - PAD | milestone | 0d | 2025-03-24 | 2025-03-24 | 32 | 173d | 0d | 62 |  |  |
| 35 | 3.11.2 | Calculate exporter margins | milestone | 0d | 2025-03-24 | 2025-03-24 | 34 | 173d | 0d | 62 |  |  |
| 36 | 3.11.3 | Draft PAD | milestone | 0d | 2025-03-24 | 2025-03-24 | 35 | 173d | 0d | 62 |  |  |
| 37 | 3.11.4 | Commissioner's Panel | milestone | 0d | 2025-03-24 | 2025-03-24 | 36 | 173d | 0d | 62 |  |  |
| 38 | 3.11.5 | Publication of PAD | milestone | 0d | 2025-03-24 | 2025-03-24 | 37 | 173d | 0d | 62 |  |  |
| 39 | 3.12 | Imposition of securities |  | 1d | 2025-03-25 | 2025-03-25 | 32, 38 | 173d |  | 63 |  |  |
| 40 | 4 | **Questionnaires** |  | 31d | 2025-01-28 | 2025-03-12 |  | 40d | 0d |  |  |  |
| 41 | 4.1 | Receive Importer questionnaires | milestone | 0d | 2025-02-11 | 2025-02-11 | 21FF+15d | 107d | 0d | 21 |  |  |
| 42 | 4.2 | Importer questionnaire extension delay | milestone | 0d | 2025-02-11 | 2025-02-11 | 41 | 107d | 0d | 21 | ܁ | ܁8 |
| 43 | 4.3 | RIQ deficiency check |  | 5d | 2025-02-12 | 2025-02-18 | 42 | 107d |  | 28 |  |  |
| 44 | 4.4 | **Preliminary Information Request** |  | 4d | 2025-01-28 | 2025-02-03 |  | 40d |  |  |  |  |
| 45 | 4.4.1 | Receive PIR reponses | milestone | 0d | 2025-01-28 | 2025-01-28 | 21FF+5d | 40d | 0d |  |  |  |
| 46 | 4.4.2 | Review responses and select sample | milestone | 0d | 2025-01-28 | 2025-01-28 | 45 | 40d | 0d |  |  |  |
| 47 | 4.4.3 | QCP on sampling | milestone | 0d | 2025-01-28 | 2025-01-28 | 46 | 122d |  |  |  |  |
| 48 | 4.4.4 | Draft sampling report | milestone | 0d | 2025-01-28 | 2025-01-28 | 46 | 40d | 0d |  |  |  |
| 49 | 4.4.5 | Legal review of sampling report | milestone | 0d | 2025-01-28 | 2025-01-28 | 48 | 40d | 0d |  |  |  |
| 50 | 4.4.6 | Papers to CP (must be a Friday) | milestone | 0d | 2025-01-28 | 2025-01-28 | 49 | 40d | 0d |  |  |  |
| 51 | 4.4.7 | Commissioner's Panel (must be a Thursday) | milestone | 0d | 2025-02-03 | 2025-02-03 | 50FS+4d | 40d | 0d | 13 |  |  |
| 52 | 4.4.8 | Publish sampling report | milestone | 0d | 2025-02-03 | 2025-02-03 | 51 | 40d | 0d | 13 |  |  |
| 53 | 4.4.9 | Send exporter questionnaires to sample | milestone | 0d | 2025-02-03 | 2025-02-03 | 52 | 40d | 0d | 13 |  |  |
| 54 | 4.5 | Receive Exporter questionnaires | milestone | 0d | 2025-03-12 | 2025-03-12 | 21FF+27d, 53FF+27d | 40d | 0d | 50 |  |  |
| 55 | 4.6 | Exporter questionnaire extensions of time | milestone | 0d | 2025-03-12 | 2025-03-12 | 54 | 40d | 0d | 50 | ܁ | ܁8 |
| 56 | 5 | **Verification** |  | 94d | 2025-01-21 | 2025-06-02 |  | 76d |  |  |  |  |
| 57 | 5.1 | **Australian Industry Verification** |  | 27d | 2025-01-21 | 2025-02-27 |  | 105d |  |  |  |  |
| 58 | 5.1.1 | Schedule delay: case unallocated | milestone | 0d | 2025-01-21 | 2025-01-21 | 21 | 105d | 0d |  |  | ܁, |
| 59 | 5.1.2 | Confirm Australian Industry members to visit |  | 2d | 2025-01-22 | 2025-01-23 | 58 | 105d | 0d |  |  |  |
| 60 | 5.1.3 | Schedule delay - Australian Industry verification | milestone | 0d | 2025-01-23 | 2025-01-23 | 59 | 105d | 0d |  |  | ܁0 |
| 61 | 5.1.4 | Complete pre-work |  | 5d | 2025-01-24 | 2025-01-30 | 60 | 105d | 0d |  |  |  |
| 62 | 5.1.5 | Undertake Australian Industry Verification |  | 5d | 2025-01-31 | 2025-02-06 | 61 | 105d | 0d | 16 |  |  |
| 63 | 5.1.6 | Prepare the Australian Industry Verification Report and Work Program |  | 3w | 2025-02-07 | 2025-02-27 | 62 | 105d | 0d | 37 |  |  |
| 64 | 5.1.7 | Publish the Verification Report | milestone | 0d | 2025-02-27 | 2025-02-27 | 63 | 105d | 9d | 37 |  |  |

Notes:
- 41: Comments: Due in 21 days after initiation
- 53: Comments: Exporter questionnaires should have been drafted at initiation and there should be no time consumed preparing the EQ
- 54: Comments: Due in 37 days after initaition or selection from PIR
- 59: Comments: Case Director and Case Manager confirm Australian Industry members to visit
- 61: Verification Team commence Verification Work Programs and prepare agendas / Verification Team complete pre-work / Relevant Verification Team makes travel arrangements / Comments: Verification Team complete pre-work
- 62: Comments: Verification Team undertake Australian Industry Verification
- 63: Comments: Verification Team prepare the Australian Industry Verification Report and Work Program
- 64: Comments: DSA Business Services publish the Verification Report

| ID | WBS | Task | Type | Duration | Start | Finish | Predecessors | Total slack | Free slack | Day Count | Delay Detail |
| --- | --- | --- | --- | --- | --- | --- | --- | --- | --- | --- | --- |
| 65 | 5.2 | **Importer Verification** |  | 24d | 2025-02-11 | 2025-03-17 |  | 179d |  |  |  |
| 66 | 5.2.1 | Schedule delay - Importer verification | milestone | 0d | 2025-02-11 | 2025-02-11 | 41 | 179d | 0d | 21 | ܁0 |
| 67 | 5.2.2 | Complete pre-work |  | 4d | 2025-02-12 | 2025-02-17 | 66 | 179d | 0d | 27 |  |
| 68 | 5.2.3 | Undertake Importer Verification |  | 5d | 2025-02-18 | 2025-02-24 | 67 | 179d | 0d | 34 |  |
| 69 | 5.2.4 | Prepare the Importer Verification Report |  | 5d | 2025-02-25 | 2025-03-03 | 68 | 179d | 0d | 41 |  |
| 70 | 5.2.5 | VADA review |  | 5d | 2025-03-04 | 2025-03-10 | 69 | 179d | 0d | 48 |  |
| 71 | 5.2.6 | Importer Review |  | 5d | 2025-03-11 | 2025-03-17 | 70 | 179d | 0d | 55 |  |
| 72 | 5.2.7 | Publish the Verification Report | milestone | 0d | 2025-03-17 | 2025-03-17 | 71 | 179d |  | 55 |  |
| 73 | 5.3 | **Exporter Verification** |  | 73d | 2025-02-20 | 2025-06-02 |  | 55d |  |  |  |
| 74 | 5.3.1 | **Overseas travel administration** |  | 13d | 2025-02-20 | 2025-03-10 |  | 68d |  |  |  |
| 75 | 5.3.1.1 | Confirm expected verification load |  | 1d | 2025-02-20 | 2025-02-20 | 21FS+21d | 68d | 0d | 30 |  |
| 76 | 5.3.1.2 | ITAS lodged |  | 2d | 2025-02-21 | 2025-02-24 | 75 | 68d | 0d | 34 |  |
| 77 | 5.3.1.3 | ITAS approval process |  | 2w | 2025-02-25 | 2025-03-10 | 76 | 68d | 0d | 48 |  |
| 78 | 5.3.1.4 | Dep Sec policy approval | milestone | 0d | 2025-03-10 | 2025-03-10 | 77 | 184d |  | 48 |  |
| 79 | 5.3.2 | **Exporter selection** |  | 16d | 2025-03-13 | 2025-04-03 |  | 40d |  |  |  |
| 80 | 5.3.2.1 | REQ deficiency check |  | 1d | 2025-03-13 | 2025-03-13 | 55 | 40d | 0d | 51 |  |
| 81 | 5.3.2.2 | Conduct comparative analysis/VRAM |  | 14d | 2025-03-14 | 2025-04-02 | 80 | 40d | 0d | 71 |  |
| 82 | 5.3.2.3 | Final selection of exporters |  | 1d | 2025-04-03 | 2025-04-03 | 81 | 40d | 0d | 72 |  |
| 83 | 5.3.3 | **Exporter 1 verification** |  | 42d | 2025-04-03 | 2025-06-02 |  | 40d |  |  |  |
| 84 | 5.3.3.1 | Schedule delay - exporter verification | milestone | 0d | 2025-04-03 | 2025-04-03 | 82 | 40d | 0d | 72 | ܁0 |
| 85 | 5.3.3.2 | Complete pre-work |  | 10d | 2025-04-04 | 2025-04-17 | 84, 81 | 40d | 0d | 86 |  |
| 86 | 5.3.3.3 | Undertake Exporter Verification |  | 10d | 2025-04-18 | 2025-05-01 | 85, 77 | 40d | 0d | 100 |  |
| 87 | 5.3.3.4 | Prepare Exporter verification report |  | 10d | 2025-05-02 | 2025-05-15 | 86 | 40d | 0d | 114 |  |
| 88 | 5.3.3.5 | VADA review |  | 5d | 2025-05-16 | 2025-05-22 | 87 | 40d | 0d | 121 |  |
| 89 | 5.3.3.6 | Case manager review |  | 2d | 2025-05-23 | 2025-05-26 | 88 | 124d | 0d | 125 |  |
| 90 | 5.3.3.7 | Exporter review |  | 1w | 2025-05-27 | 2025-06-02 | 89 | 124d | 0d | 132 |  |
| 91 | 5.3.3.8 | Publish the Verification Report | milestone | 0d | 2025-06-02 | 2025-06-02 | 90 | 124d |  | 132 |  |

Notes:
- 67: Including: / Officer undertaking the travel makes the travel arrangements / Verification Team commences Verification Work Programs and prepares agendas / completing and reviewing of VRAM / Comments: Verification Team complete pre-work
- 68: Comments: Verification Team undertakes Importer/Exporter Verification
- 69: Comments: Verification Team prepares the Importer/Exporter Verification Report
- 70: Comments: VADA (QAV) reviews Work Programs, Verification Reports, Dumping Margin Calculations and appendices
- 72: Comments: DSA Business Services publish the Verification Report
- 76: Comments: QAV lodges the ITAS on a country specific level
- 85: Including / Travel is organised by QAV / Verification Team commences Verification Work Programs and prepares agendas / preparing and reviewing VRAM / Comments: Verification Team complete pre-work
- 86: Comments: Verification Team undertakes Importer/Exporter Verification
- 87: Comments: Verification Team finalises the verification
- 88: Comments: VADA (QAV) reviews Work Programs, Verification Reports, Dumping Margin Calculations and appendices
- 91: Comments: DSA Business Services publish the Verification Report

| ID | WBS | Task | Type | Duration | Start | Finish | Predecessors | Total slack | Free slack | Delay Category | Delay Detail | Day Count |
| --- | --- | --- | --- | --- | --- | --- | --- | --- | --- | --- | --- | --- |
| 92 | 5.4 | **End user Verification/Engagement** |  | 0d | 2025-02-27 | 2025-02-27 |  | 130d |  | ܁ | ܁6 |  |
| 93 | 5.4.1 | Schedule delay - end user verification | milestone | 0d | 2025-02-27 | 2025-02-27 | 21SS+27d | 130d | 0d |  |  | 37 |
| 94 | 5.4.2 | Complete pre-work | milestone | 0d | 2025-02-27 | 2025-02-27 | 93 | 130d | 0d |  |  | 37 |
| 95 | 5.4.3 | Undertake End User Verification | milestone | 0d | 2025-02-27 | 2025-02-27 | 94 | 130d | 0d |  |  | 37 |
| 96 | 5.4.4 | Prepare the Verification Report/file note | milestone | 0d | 2025-02-27 | 2025-02-27 | 95 | 130d | 0d |  |  | 37 |
| 97 | 5.4.5 | Prepare the Verification Report/file note | milestone | 0d | 2025-02-27 | 2025-02-27 | 96 | 130d | 34d |  |  | 37 |
| 98 | 5.5 | **Government Verification/Engagement** |  | 0d | 2025-02-27 | 2025-02-27 |  | 130d |  | ܁ | ܁6 |  |
| 99 | 5.5.1 | Schedule delay - end user verification | milestone | 0d | 2025-02-27 | 2025-02-27 | 21SS+27d | 130d | 0d |  |  | 37 |
| 100 | 5.5.2 | Complete pre-work | milestone | 0d | 2025-02-27 | 2025-02-27 | 99 | 130d | 0d |  |  | 37 |
| 101 | 5.5.3 | Undertake End User Verification | milestone | 0d | 2025-02-27 | 2025-02-27 | 100 | 130d | 0d |  |  | 37 |
| 102 | 5.5.4 | Prepare the Verification Report/file note | milestone | 0d | 2025-02-27 | 2025-02-27 | 101 | 130d | 0d |  |  | 37 |
| 103 | 5.5.5 | Prepare the Verification Report/file note | milestone | 0d | 2025-02-27 | 2025-02-27 | 102 | 130d | 34d |  |  | 37 |
| 104 | 6 | **Particular Market Situation** |  | 51d | 2025-03-12 | 2025-05-22 |  | 70d |  |  | ܁# |  |
| 105 | 6.1 | Schedule delay - resources to assess PMS | milestone | 0d | 2025-03-12 | 2025-03-12 | 55 | 91d | 0d |  |  | 50 |
| 106 | 6.2 | Assess PMS and proper comparison | milestone | 0d | 2025-03-12 | 2025-03-12 | 105 | 91d | 0d |  |  | 50 |
| 107 | 6.3 | Establish cost of production and benchmarks | milestone | 0d | 2025-03-12 | 2025-03-12 | 106 | 91d | 51d |  |  | 50 |
| 108 | 6.4 | Uplift dumping margin calculations for each exporter | milestone | 0d | 2025-05-22 | 2025-05-22 | 107, 88 | 40d | 0d |  |  | 121 |
| 109 | 6.5 | Re-VADA calculations | milestone | 0d | 2025-05-22 | 2025-05-22 | 108 | 40d | 0d |  |  | 121 |
| 110 | 6.6 | Schedule delay: external legal advice | milestone | 0d | 2025-03-12 | 2025-03-12 | 106 | 121d | 51d |  |  | 50 |
| 111 | 6.7 | PMS chapter of SEF | milestone | 0d | 2025-05-22 | 2025-05-22 | 109, 110 | 70d | 30d |  |  | 121 |
| 112 | 7 | **SEF** |  | 99d | 2025-03-13 | 2025-07-29 | 40 | 83d |  |  |  |  |
| 113 | 7.1 | **Draft SEF** |  | 81d | 2025-03-13 | 2025-07-03 |  | 40d | 0d |  |  |  |
| 114 | 7.1.1 | Australian Industry chapter |  | 1w | 2025-03-13 | 2025-03-19 | 64 | 96d | 0d |  |  | 57 |
| 115 | 7.1.2 | Australian Market chapter |  | 4w | 2025-03-20 | 2025-04-16 | 114, 97FF, 103FF | 96d |  |  |  | 85 |
| 116 | 7.1.3 | Dumping chapter |  | 1w | 2025-05-23 | 2025-05-29 | 88, 109 | 40d | 0d |  |  | 128 |
| 117 | 7.1.4 | Subsidy chapter |  | 1w | 2025-05-23 | 2025-05-29 | 88, 109 | 40d | 0d |  | ܁# | 128 |
| 118 | 7.1.5 | Injury chapter |  | 4w | 2025-05-30 | 2025-06-26 | 116, 117 | 40d | 0d |  |  | 156 |
| 119 | 7.1.6 | Causation chapter |  | 1w | 2025-06-27 | 2025-07-03 | 118 | 40d | 0d |  |  | 163 |
| 120 | 7.1.7 | Form of measures chapter |  | 2d | 2025-07-02 | 2025-07-03 | 119FF | 40d |  |  |  | 163 |
| 121 | 7.1.8 | Executive summary and recommendations |  | 2d | 2025-07-02 | 2025-07-03 | 119FF | 40d |  |  |  | 163 |
| 122 | 7.2 | Meeting - QCP 5 |  | 1h | 2025-05-16 | 2025-05-16 | 87 | 135.88d |  |  |  | 115 |
| 123 | 7.3 | Meeting - CP 4 - Pre-SEF brief | milestone | 0d | 2025-06-17 | 2025-06-17 | 130FF-6w | 113d |  |  |  | 147 |
| 124 | 7.4 | Meeting - QCP 6 |  | 1h | 2025-07-01 | 2025-07-01 | 130FF-4w | 103d |  |  |  | 161 |
| 125 | 7.5 | Legal review of SEF |  | 5d | 2025-07-04 | 2025-07-10 | 113, 111 | 40d | 0d |  |  | 170 |
| 126 | 7.6 | Pre CP review and refine |  | 5d | 2025-07-11 | 2025-07-17 | 125 | 40d | 0d |  |  | 177 |
| 127 | 7.7 | Present SEF at the CP (Thursday) |  | 4d | 2025-07-18 | 2025-07-23 | 126 | 40d | 0d |  |  | 183 |
| 128 | 7.8 | Review and Refine Post CP |  | 3d | 2025-07-24 | 2025-07-28 | 127 | 40d | 0d |  |  | 188 |
| 129 | 7.9 | Commissioner reviews SEF and approve on CMS |  | 1d | 2025-07-29 | 2025-07-29 | 128 | 40d | 0d |  |  | 189 |
| 130 | 7.10 | Publishes SEF | milestone | 0d | 2025-07-29 | 2025-07-29 | 129 | 40d | 0d |  |  | 189 |

Notes:
- 94: Including / Officer undertaking the travel makes the travel arrangements / Verification Team commences Verification Work Programs and prepares agendas / Comments: Verification Team complete pre-work
- 95: Comments: Verification Team undertakes Importer/Exporter Verification
- 96: Comments: Verification Team prepares the Importer/Exporter Verification Report
- 97: Comments: DSA Business Services publish the Verification Report
- 100: Including / Officer undertaking the travel makes the travel arrangements / Verification Team commences Verification Work Programs and prepares agendas / Comments: Verification Team complete pre-work
- 101: Comments: Verification Team undertakes Importer/Exporter Verification
- 102: Comments: Verification Team prepares the Importer/Exporter Verification Report
- 103: Comments: DSA Business Services publish the Verification Report
- 106: Case Manager prepares SEF / Case Director reviews the SEF / Comments: Case Manager prepares PMS assessment
- 109: Comments: Case Manager presents SEF at the CP
- 111: Comments: Case Manager amends the SEF
- 113: Comments: Case Manager prepares SEF
- 123: Comments: Case team present the key findings
- 125: Comments: Legal reviews SEF
- 127: Comments: Case Manager presents SEF at the CP
- 128: Comments: Case Manager amends the SEF
- 129: Case Manager populates CMS with variable factors used to implement PAD / Comments: Commissioner reviews SEF
- 130: Request DSA Business Services to publish SEF / Comments: DSA Business Services publishes SEF

| ID | WBS | Task | Type | Duration | Start | Finish | Predecessors | Total slack | Free slack | Day Count |
| --- | --- | --- | --- | --- | --- | --- | --- | --- | --- | --- |
| 131 | 8 | **Final Report** |  | 43d | 2025-07-30 | 2025-09-26 | 130 | 40d |  |  |
| 132 | 8.1 | Receive submissions |  | 14d | 2025-07-30 | 2025-08-18 |  | 40d | 0d | 209 |
| 133 | 8.2 | Consider the submissions |  | 5d | 2025-08-19 | 2025-08-25 | 132 | 40d | 0d | 216 |
| 134 | 8.3 | Prepare Final Report |  | 10d | 2025-08-26 | 2025-09-08 | 133 | 40d | 0d | 230 |
| 135 | 8.4 | Legal and Deputy Commissioner review Final Report |  | 5d | 2025-09-09 | 2025-09-15 | 134 | 40d | 0d | 237 |
| 136 | 8.5 | Present Final Report at the CP (Thursday) |  | 5d | 2025-09-16 | 2025-09-22 | 135 | 40d | 0d | 244 |
| 137 | 8.6 | Review and Refine Post CP |  | 3d | 2025-09-23 | 2025-09-25 | 136 | 40d | 0d | 247 |
| 138 | 8.7 | Commissioner reviews the Final Report and approve on CMS |  | 1d | 2025-09-26 | 2025-09-26 | 137 | 40d | 0d | 248 |
| 139 | 8.8 | Send the Final Report to Minister | milestone | 0d | 2025-09-26 | 2025-09-26 | 138 | 40d |  | 248 |

Notes:
- 132: Receive and publish non-confidential version / Comments: Case Manager receives submissions
- 133: Including all previous submissions and if any changes are to happen on the calculations, VADA needs to review the changes. / Comments: Case Manager considers the submissions
- 134: Case Manager prepares Final Report / Case Director reviews Final Report
- 135: Comments: Legal and Deputy Commissioner review Final Report
- 136: Comments: Case Manager presents Final Report
- 137: Comments: Case Manager amends Final Report
- 138: Comments: Commissioner reviews the Final Report
- 139: Request DSA Business Services to send the Final Repor to Minister / Comments: DSA Business Services sends the Final Report and accompanying documentation to the Minister
