# Duty Assessment DA0999

Schedule from MS Project, 2025-01-01 to 2025-06-10.

## Calendars

- Standard: Mon-Fri 08:00-12:00, 13:00-17:00; Sat-Sun off.

## Schedule

| ID | WBS | Task | Type | Duration | Start | Finish | Predecessors | Total slack | Free slack | Constraint |
| --- | --- | --- | --- | --- | --- | --- | --- | --- | --- | --- |
| 1 | 1 | **Screening** |  | 15d | 2025-01-01 | 2025-01-21 |  | 0d |  |  |
| 2 | 1.1 | Review the application for completeness and eligibility |  | 2ed | 2025-01-01 | 2025-01-03 |  | 0d |  | start no earlier than 2025-01-01 |
| 3 | 1.2 | Update CMS |  | 1ed | 2025-01-03 | 2025-01-04 | 2 | 0d |  |  |
| 4 | 1.3 | Reconcile application with CRE data |  | 5ed | 2025-01-04 | 2025-01-09 | 3 | 0d |  |  |
| 5 | 1.4 | Complete the Day-20 Checklist in CMS and Letter |  | 1ed | 2025-01-09 | 2025-01-10 | 4 | 0d |  |  |
| 6 | 1.5 | Lock confirmed FIDs in the ICS. |  | 1ed | 2025-01-10 | 2025-01-11 | 5 | 0d |  |  |
| 7 | 1.6 | Reconcile locked FIDs with application |  | 1ed | 2025-01-11 | 2025-01-12 | 6 | 0d |  |  |
| 8 | 1.7 | Finalise Day-20 Checklist and the Letter |  | 4ed | 2025-01-12 | 2025-01-16 | 7 | 0d |  |  |
| 9 | 1.8 | Legal Review |  | 3d | 2025-01-16 | 2025-01-20 | 8 | 0d |  |  |
| 10 | 1.9 | Approve Day-20 Checklist and Review the Letter |  | 1ed | 2025-01-20 | 2025-01-21 | 9 | 1.88d | 0d |  |
| 11 | 1.10 | Send the Letter to the applicant | milestone | 0ed | 2025-01-21 | 2025-01-21 | 10 | 1.88d | 0d |  |
| 12 | 2 | Unallocated |  | 55ed | 2025-01-21 | 2025-03-17 | 11 | 1.88d |  |  |
| 13 | 3 | **Duty Calculation** |  | 59d | 2025-03-18 | 2025-06-06 |  | 0d |  |  |
| 14 | 3.1 | Calculate variable factors |  | 40d | 2025-03-18 | 2025-05-12 | 12 | 0d |  |  |
| 15 | 3.2 | Calculate final duty payable |  | 10d | 2025-05-13 | 2025-05-26 | 14 | 0d |  |  |
| 16 | 3.3 | Prepare decision record and other docs |  | 5d | 2025-05-27 | 2025-06-02 | 15 | 0d |  |  |
| 17 | 3.4 | Deputy Commissioner review and approve |  | 2d | 2025-06-03 | 2025-06-04 | 16 | 0d |  |  |
| 18 | 3.5 | Commissioner review and approve |  | 2d | 2025-06-05 | 2025-06-06 | 17 | 0d |  |  |
| 19 | 3.6 | Advise applicatn of the Commissier's decision & Update CMS | milestone | 0d | 2025-06-06 | 2025-06-06 | 18 | 0d |  |  |
| 20 | 4 | **Refund** |  | 2d | 2025-06-09 | 2025-06-10 |  | 0d |  |  |
| 21 | 4.1 | DSA laise with applicant to process refund |  | 1d | 2025-06-09 | 2025-06-09 | 19 | 0d |  |  |
| 22 | 4.2 | Send refund request to ABF |  | 1d | 2025-06-10 | 2025-06-10 | 21 | 0d |  |  |

Notes:
- 1: Text1: This is 20 edays
- 2: QAV reviews of the application for completeness, using Copilot to assist and ensure the submission was made within 6 months of the end of the importation period and the application includes all relevant consignments. Additionally, QAV assess the application for compliance with subsection 269W(1) and 269W(1A)/269W(1B). / Text1: QAV reviews of the application for completeness, using Copilot to assist and ensure the submission was made within 6 months of the end of the importation period and the application includes all relevant consignments. Additionally, QAV assess the applicati
- 3: Text1: Application and documentation is received in the CMS. QAV notifies relevant parties (DC, Legal, and Policy) of the new case.
- 4: Text1: QAV extracts CRE/ICS data, then conducts reconciliation of the IDD declared against the CRE/ICS data and verifies any discrepancies with the Applicant (if required).
- 5: Text1: QAV completes the Day 20 Checklist within CMS and begins preparing the Letter, along with relevant appendices/documents.
- 6: Text1: QAV locks confirmed FIDs in the ICS.
- 7: Text1: CRE/ICS data is extracted again (after the FIDs are locked) and another reconciliation of the IDD is performed.
- 8: Text1: QAV finalises the letter to the Applicant (Day 20 Letter/Reject Letter).
- 10: Text1: Commissioner reviews and signs the Day 20 Checklist in CMS and a letter to the Applicant (Day 20 Letter/Reject Letter). Approves recommendation in CMS.
- 11: Text1: QAV sends Day 20 Letter or Reject Letter to the Applicant, following Legal review.
- 12: Text1: This is 55 edays
- 13: Text1: This is 80 edays
- 14: Text1: Case Manager calculates variable factors for each consignment of goods imported during importation period.
- 15: Text1: Case Manager calculates the final duty payable based on variable factors.
- 16: Text1: Case Manager and Case Director prepare the Duty Assessment Decision Record, Delegate’s section 269Y Instrument and tables Advice to Applicant letter.
- 17: Text1: Deputy Commissioner reviews and approves Duty Assessment Decision Record, delegates section 269X Instrument and Advice to Applicant letter. Legal reviews legislative instruments containing the decision.
- 18: Text1: Deputy Commissioner drafts an email and Commissioner’s section 269Y(1) instrument and tables and recommends the Commissioner gives effect to the decision.
- 19: Text1: Case Manager advises the Applicant of the Commissioner’s decision on refund. If a refund is to be processed, DSA Business Services request bank information and notify applicant of refund value.
- 22: Text1: DSA Business Services prepares and sends ABF Refund Request formand associated documents to ABF. CMS automatically updated with final status.
